# 船厂智能监控项目

Schedule from a web Gantt chart, 2026-05-20 to 2026-06-10.
Saturdays and Sundays are off

## Schedule

| ID | WBS | Task | Duration | Start | Finish | inPeople |
| --- | --- | --- | --- | --- | --- | --- |
| 2 | 1 | 系统设计 | 2d | 2026-05-20 | 2026-05-21 | 陈建炜 |
| 3 | 2 | 系统设计方案评审 | 1d | 2026-05-22 | 2026-05-22 | 陈建炜、贺文飞 |
| 4 | 3 | 测试环境硬件准备（摄像头采购及安装、GPU服务器准备） | 6d | 2026-05-25 | 2026-06-01 | 刘欢、张春林 |
| 5 | 4 | 测试环境基础环境搭建（关系型数据库、向量数据库、对象存储、缓存数据库搭建） | 2d | 2026-05-25 | 2026-05-26 |  |
| 6 | 5 | 系统框架以及表结构创建 | 1d | 2026-05-26 | 2026-05-26 |  |
| 7 | 6 | 桌面应用设计 | 2d | 2026-05-25 | 2026-05-26 |  |
| 8 | 7 | 设备管理页面开发 | 3d | 2026-05-27 | 2026-05-29 |  |
| 9 | 8 | 事件告警页面开发 | 3d | 2026-06-01 | 2026-06-03 |  |
| 10 | 9 | 配置管理页面开发 | 3d | 2026-06-03 | 2026-06-05 |  |
| 11 | 10 | 记录管理页面开发 | 3d | 2026-06-08 | 2026-06-10 |  |
| 12 | 11 | 设备管理相关功能后端开发 | 3d | 2026-05-26 | 2026-05-28 |  |
| 13 | 12 | 事件告警相关功能后端开发 | 3d | 2026-05-29 | 2026-06-02 |  |
| 14 | 13 | 配置管理相关功能后端开发 | 3d | 2026-06-03 | 2026-06-05 |  |
| 15 | 14 | 记录管理相关功能后端开发 | 3d | 2026-06-08 | 2026-06-10 |  |
